How a schedule from an exported table changed from version to version. A marks actual dates.

## Version 1 (saved 2025-12-22)

Note of the change: Add scope estimates CSV and backup version of SOW

| Task | Start | Finish |
| --- | --- | --- |
| Phase 1: Discovery & Design | 1/15/2025 | 1/21/2025 |
| Phase 2: Build - Monitoring Framework | 2/5/2025 | 2/11/2025 |
| Phase 3: Build - Webhook Pattern | 3/5/2025 | 3/11/2025 |
| Phase 4: First Source Implementation | 3/19/2025 | 3/25/2025 |
| Phase 5: Knowledge Transfer | 3/12/2025 | 3/18/2025 |
| Phase 6: Hypercare & Handover | 5/21/2025 | 5/27/2025 |

## Version 2 (saved 2025-12-22)

Note of the change: Update Scope Estimates CSV with extended Phase 3 and Engagement Manager

Changed:

| Task | Start | Finish |
| --- | --- | --- |
| Phase 3: Build - Webhook Pattern | 3/5/2025 → 3/19/2025 | 3/11/2025 → 3/25/2025 |
| Phase 4: First Source Implementation | 3/19/2025 → 4/9/2025 | 3/25/2025 → 4/15/2025 |
| Phase 5: Knowledge Transfer | 3/12/2025 → 4/16/2025 | 3/18/2025 → 4/22/2025 |
| Phase 6: Hypercare & Handover | 5/21/2025 → 5/14/2025 | 5/27/2025 → 5/20/2025 |
